# KeSinhNhai plan

Schedule from MS Project, 2016-05-09 to 2016-08-26.

## Calendars

- Standard: Mon-Fri 08:00-12:00, 13:00-17:00; Sat-Sun off.

## Resources

| Resource |
| --- |
| Team |
| DangT |
| DevTeam |
| Design Team |
| HungTQ |
| LamNS |
| QuangNN |
| HungNV |
| TestTeam |

## Schedule

| ID | WBS | Task | Type | Duration | Start | Finish | Predecessors | Total slack | Free slack | Resources | Work |
| --- | --- | --- | --- | --- | --- | --- | --- | --- | --- | --- | --- |
| 1 | 1 | **Company Rating Website** |  | 80d? | 2016-05-09 | 2016-08-26 |  | 0d |  |  | 1376.5h |
| 2 | 1.1 | **Initiation** |  | 9.25d? | 2016-05-09 | 2016-05-20 |  | 0d |  |  | 228.5h |
| 3 | 1.1.1 | Form up team roles |  | 0.25d | 2016-05-09 | 2016-05-09 |  | 0d |  | Team | 2h |
| 4 | 1.1.2 | Select project idea |  | 0.5d? | 2016-05-09 | 2016-05-09 | 3 | 0d |  | Team | 4h |
| 5 | 1.1.3 | **Develop project idea** |  | 1d? | 2016-05-09 | 2016-05-10 | 4 | 0d |  |  | 8h |
| 6 | 1.1.3.1 | Define project scope |  | 0.5d? | 2016-05-09 | 2016-05-10 |  | 0d |  | Team | 4h |
| 7 | 1.1.3.2 | Define project features |  | 0.5d? | 2016-05-10 | 2016-05-10 | 6 | 0d |  | Team | 4h |
| 8 | 1.1.4 | Kick-off meeting |  | 1d? | 2016-05-10 | 2016-05-11 | 5 | 0d |  | Team | 8h |
| 9 | 1.1.5 | **Environment** |  | 2.25d? | 2016-05-11 | 2016-05-13 | 8 | 0.25d |  |  | 22.5h |
| 10 | 1.1.5.1 | Create guideline to install and use tools & enviroments |  | 1d | 2016-05-11 | 2016-05-12 |  | 0.25d | 0d | DangT | 8h |
| 11 | 1.1.5.2 | **Install tools & environments** |  | 0.25d | 2016-05-12 | 2016-05-12 | 10 | 0.25d | 0d |  | 6.5h |
| 12 | 1.1.5.2.1 | Install GitHub desktop program |  | 0.5h | 2016-05-12 | 2016-05-12 |  | 0.44d |  | Team | 0.5h |
| 13 | 1.1.5.2.2 | Install Sublime Text 3 |  | 0.5h | 2016-05-12 | 2016-05-12 |  | 0.44d |  | Team | 0.5h |
| 14 | 1.1.5.2.3 | Install Microsoft Project 2015 |  | 2h | 2016-05-12 | 2016-05-12 |  | 0.25d |  | Team | 2h |
| 15 | 1.1.5.2.4 | Install Node.js |  | 1h | 2016-05-12 | 2016-05-12 |  | 0.38d |  | Team | 1h |
| 16 | 1.1.5.2.5 | Install AngularJS |  | 1h | 2016-05-12 | 2016-05-12 |  | 0.38d |  | Team | 1h |
| 17 | 1.1.5.2.6 | Install Express |  | 1h | 2016-05-12 | 2016-05-12 |  | 0.38d |  | Team | 1h |
| 18 | 1.1.5.2.7 | Install MongoDB |  | 0.5h | 2016-05-12 | 2016-05-12 |  | 0.44d |  | Team | 0.5h |
| 19 | 1.1.5.3 | Training using tools & environments |  | 1d? | 2016-05-13 | 2016-05-13 | 11 | 0.25d | 0d | Team | 8h |
| 20 | 1.1.6 | **Technology Research (part 1)** |  | 4d | 2016-05-16 | 2016-05-19 | 19 | 0.25d |  |  | 64h |
| 21 | 1.1.6.1 | Study Bootstrap, HTML5, CSS3 |  | 4d | 2016-05-16 | 2016-05-19 |  | 0.25d |  | Design Team | 32h |
| 22 | 1.1.6.2 | Study MongoDB |  | 4d | 2016-05-16 | 2016-05-19 |  | 0.25d |  | DevTeam | 32h |
| 23 | 1.1.7 | SRS/PP Review Checklist |  | 0.5d | 2016-05-11 | 2016-05-12 | 8 | 0d |  | HungTQ | 4h |
| 24 | 1.1.8 | **Project Plan** |  | 5d | 2016-05-12 | 2016-05-19 | 23 | 0d |  |  | 48h |
| 25 | 1.1.8.1 | Create Project Plan in MS Word |  | 2d | 2016-05-12 | 2016-05-16 |  | 0d |  | LamNS | 16h |
| 26 | 1.1.8.2 | Create Project Schedule in .mpp file |  | 2d | 2016-05-16 | 2016-05-18 | 25 | 0d |  | LamNS | 16h |
| 27 | 1.1.8.3 | Creating CM plan |  | 0.5d | 2016-05-12 | 2016-05-12 |  | 3.5d |  | HungTQ | 4h |
| 28 | 1.1.8.4 | Review Project Plan, CM Plan, Schedule |  | 0.5d | 2016-05-18 | 2016-05-18 | 26, 27 | 0d |  | HungTQ | 4h |
| 29 | 1.1.8.5 | Update Project Plan, CM Plan, Schedule |  | 0.5d | 2016-05-18 | 2016-05-19 | 28 | 0d |  | HungTQ; LamNS | 8h |
| 30 | 1.1.8.6 | Complete Project Plan | milestone | 0d | 2016-05-19 | 2016-05-19 | 29 | 0d |  |  |  |

| ID | WBS | Task | Type | Duration | Start | Finish | Predecessors | Total slack | Free slack | Resources | Work |
| --- | --- | --- | --- | --- | --- | --- | --- | --- | --- | --- | --- |
| 31 | 1.1.9 | **User Requirements Specification** |  | 4d? | 2016-05-12 | 2016-05-18 | 23 | 1d |  |  | 48h |
| 32 | 1.1.9.1 | Create User Requirement Specification |  | 2d | 2016-05-12 | 2016-05-16 |  | 1d | 0d | Team | 16h |
| 33 | 1.1.9.2 | Review User Requirement Specification |  | 1d? | 2016-05-16 | 2016-05-17 | 32 | 1d | 0d | HungTQ; DangT | 16h |
| 34 | 1.1.9.3 | Update User Requirement Specification |  | 1d | 2016-05-17 | 2016-05-18 | 33 | 1d | 0d | QuangNN; HungNV | 16h |
| 35 | 1.1.9.4 | Complete User Requirement Specification | milestone | 0d | 2016-05-18 | 2016-05-18 | 34 | 1d |  |  |  |
| 36 | 1.1.10 | **Q&A Sheet** |  | 1.5d? | 2016-05-12 | 2016-05-13 | 23 | 3.5d |  |  | 12h |
| 37 | 1.1.10.1 | Create Q&A Sheet |  | 0.5d? | 2016-05-12 | 2016-05-12 |  | 3.5d | 0d | HungNV | 4h |
| 38 | 1.1.10.2 | Review Q&A Sheet |  | 0.5d | 2016-05-12 | 2016-05-13 | 37 | 3.5d | 0d | LamNS | 4h |
| 39 | 1.1.10.3 | Translate Q&A sheet to Japanese |  | 0.5d | 2016-05-13 | 2016-05-13 | 38 | 3.5d |  | HungNV | 4h |
| 40 | 1.1.11 | **Progress Report 1** |  | 1d? | 2016-05-19 | 2016-05-20 | 23, 24, 31, 36 | 0d |  |  | 8h |
| 41 | 1.1.11.1 | Create Progress Report 1 |  | 1d? | 2016-05-19 | 2016-05-20 |  | 0d |  | LamNS | 8h |
| 42 | 1.1.11.2 | Submit Progress Report 1 | milestone | 0d | 2016-05-20 | 2016-05-20 | 41 | 0d |  | HungTQ |  |
| 43 | 1.2 | **Solution** |  | 26.25d? | 2016-05-20 | 2016-06-27 | 2 | 0d |  |  | 548h |
| 44 | 1.2.1 | **Technology Research (part 2)** |  | 4d | 2016-05-20 | 2016-05-26 | 20 | 0d |  |  | 88h |
| 45 | 1.2.1.1 | OpenID Login API |  | 1d | 2016-05-20 | 2016-05-23 |  | 3d |  | HungNV | 8h |
| 46 | 1.2.1.2 | Learn Express |  | 4d | 2016-05-20 | 2016-05-26 |  | 0d |  | DangT | 32h |
| 47 | 1.2.1.3 | Learn AngularJS |  | 4d | 2016-05-20 | 2016-05-26 |  | 0d |  | HungNV | 32h |
| 48 | 1.2.1.4 | Research upvoting algorithm |  | 2d | 2016-05-20 | 2016-05-24 |  | 2d |  | DangT | 16h |
| 49 | 1.2.2 | **Demo & Prototype** |  | 8d | 2016-05-20 | 2016-06-01 |  | 18.25d |  |  | 112h |
| 50 | 1.2.2.1 | Create Prototype |  | 6d | 2016-05-20 | 2016-05-30 |  | 20.25d |  | DevTeam | 48h |
| 51 | 1.2.2.2 | Create Demo |  | 8d | 2016-05-20 | 2016-06-01 |  | 18.25d |  | Design Team | 64h |
| 52 | 1.2.3 | **Software Requirement Specification** |  | 2d | 2016-05-20 | 2016-05-24 |  | 10d | 0d |  | 30h |
| 53 | 1.2.3.1 | **Non-functional Requirements Specification** |  | 1d | 2016-05-20 | 2016-05-23 |  | 10d | 0d |  | 14h |
| 54 | 1.2.3.1.1 | Define Security Requirements |  | 0.25d | 2016-05-20 | 2016-05-20 |  | 10.75d |  | HungNV | 2h |
| 55 | 1.2.3.1.2 | Define Performance Requirements |  | 0.5d | 2016-05-20 | 2016-05-20 |  | 10.5d |  | DangT | 4h |
| 56 | 1.2.3.1.3 | Define User-Interface Requirements |  | 1d | 2016-05-20 | 2016-05-23 |  | 10d |  | HungTQ | 8h |

| ID | WBS | Task | Type | Duration | Start | Finish | Predecessors | Total slack | Free slack | Resources | Work |
| --- | --- | --- | --- | --- | --- | --- | --- | --- | --- | --- | --- |
| 57 | 1.2.3.2 | **Functional Requirements Specification** |  | 1d | 2016-05-23 | 2016-05-24 | 53 | 10d |  |  | 16h |
| 58 | 1.2.3.2.1 | Define User Client Module functional Requirements |  | 1d | 2016-05-23 | 2016-05-24 |  | 10d |  | DangT | 8h |
| 59 | 1.2.3.2.2 | Define Admin Module functional Requirements |  | 1d | 2016-05-23 | 2016-05-24 |  | 10d |  | HungNV | 8h |
| 60 | 1.2.4 | **System Design** |  | 14.75d? | 2016-05-24 | 2016-06-13 |  | 2d |  |  | 190h |
| 61 | 1.2.4.1 | Create design review checklist |  | 1d? | 2016-05-26 | 2016-05-27 | 44 | 0d |  | HungTQ | 8h |
| 62 | 1.2.4.2 | **Architectual Design** |  | 7d? | 2016-05-27 | 2016-06-07 | 61 | 0d |  |  | 56h |
| 63 | 1.2.4.2.1 | Define Architectural Design |  | 1d? | 2016-05-27 | 2016-05-30 |  | 0d |  | DevTeam | 8h |
| 64 | 1.2.4.2.2 | Define system features |  | 1d? | 2016-05-27 | 2016-05-30 |  | 0d |  | Team | 8h |
| 65 | 1.2.4.2.3 | Study and choose suitable architectural design |  | 2d | 2016-05-30 | 2016-06-01 | 63, 64 | 0d |  | DevTeam | 16h |
| 66 | 1.2.4.2.4 | Create Architectural Design |  | 1d? | 2016-06-01 | 2016-06-02 | 65 | 0d |  | DevTeam | 8h |
| 67 | 1.2.4.2.5 | Review Architectural Design |  | 1d? | 2016-06-02 | 2016-06-03 | 66 | 0d |  | DevTeam | 8h |
| 68 | 1.2.4.2.6 | Update Architectural Design |  | 1d? | 2016-06-03 | 2016-06-06 | 67 | 0d |  | LamNS | 8h |
| 69 | 1.2.4.2.7 | Complete Architectural Design version 1.0 |  | 1d? | 2016-06-06 | 2016-06-07 | 68 | 0d |  |  |  |
| 70 | 1.2.4.3 | **Screen Design** |  | 6d? | 2016-05-24 | 2016-06-01 | 52 | 18.25d |  |  | 64h |
| 71 | 1.2.4.3.1 | Create screen flow document |  | 2d | 2016-05-24 | 2016-05-26 |  | 18.25d | 0d | HungTQ | 16h |
| 72 | 1.2.4.3.2 | Create Client Screen Design |  | 2d | 2016-05-26 | 2016-05-30 | 71 | 18.25d | 0d | HungTQ | 16h |
| 73 | 1.2.4.3.3 | Create Admin Screen Design |  | 2d | 2016-05-26 | 2016-05-30 | 71 | 18.25d | 0d | HungTQ | 16h |
| 74 | 1.2.4.3.4 | Review Screen Design |  | 1d? | 2016-05-30 | 2016-05-31 | 72, 73 | 18.25d | 0d | Team | 8h |
| 75 | 1.2.4.3.5 | Update Screen Design |  | 1d? | 2016-05-31 | 2016-06-01 | 74 | 18.25d | 0d | Design Team | 8h |
| 76 | 1.2.4.3.6 | Complete Screen Design | milestone | 0d | 2016-06-01 | 2016-06-01 | 75 | 18.25d |  |  |  |
| 77 | 1.2.4.4 | **Database Design** |  | 3d? | 2016-05-24 | 2016-05-27 | 52 | 21.25d |  |  | 24h |
| 78 | 1.2.4.4.1 | Create Database Design |  | 1d | 2016-05-24 | 2016-05-25 |  | 21.25d | 0d | DangT | 8h |
| 79 | 1.2.4.4.2 | Review Database Design |  | 1d? | 2016-05-25 | 2016-05-26 | 78 | 21.25d | 0d | Team | 8h |
| 80 | 1.2.4.4.3 | Update Dabase Design |  | 1d? | 2016-05-26 | 2016-05-27 | 79 | 21.25d | 0d | DangT | 8h |
| 81 | 1.2.4.4.4 | Complete Database Design | milestone | 0d | 2016-05-27 | 2016-05-27 | 80 | 21.25d |  |  |  |

| ID | WBS | Task | Type | Duration | Start | Finish | Predecessors | Total slack | Resources | Work |
| --- | --- | --- | --- | --- | --- | --- | --- | --- | --- | --- |
| 82 | 1.2.4.5 | **Class/Component Design** |  | 4.75d? | 2016-06-07 | 2016-06-13 | 52, 62 | 0d |  | 38h |
| 83 | 1.2.4.5.1 | Define Class and Component |  | 1d? | 2016-06-07 | 2016-06-08 |  | 0d | DevTeam | 8h |
| 84 | 1.2.4.5.2 | Create Class/Component Design |  | 2d | 2016-06-08 | 2016-06-10 | 83 | 0d | DevTeam | 16h |
| 85 | 1.2.4.5.3 | Review Class/Component Design |  | 1d? | 2016-06-10 | 2016-06-13 | 84 | 0d | DevTeam | 8h |
| 86 | 1.2.4.5.4 | Update Class/Component Design |  | 0.75d | 2016-06-13 | 2016-06-13 | 85 | 0d | DevTeam | 6h |
| 87 | 1.2.4.5.5 | Complete Class/Component Design | milestone | 0d | 2016-06-13 | 2016-06-13 | 86 | 0d |  |  |
| 88 | 1.2.5 | **Progress Report 2** |  | 1d | 2016-06-14 | 2016-06-14 | 82 | 0d |  | 8h |
| 89 | 1.2.5.1 | Create Progress Report 2 |  | 1d | 2016-06-14 | 2016-06-14 |  | 0d | HungTQ | 8h |
| 90 | 1.2.5.2 | Submit Progress Report 2 | milestone | 0d | 2016-06-14 | 2016-06-14 | 89 | 0d | HungTQ |  |
| 91 | 1.2.6 | **Testing** |  | 7.5d? | 2016-06-15 | 2016-06-24 | 88 | 0d |  | 112h |
| 92 | 1.2.6.1 | Create test plan & test case checklists |  | 1d? | 2016-06-15 | 2016-06-15 |  | 6.5d | LamNS | 8h |
| 93 | 1.2.6.2 | **Test Plan** |  | 4d? | 2016-06-15 | 2016-06-20 |  | 0d |  | 48h |
| 94 | 1.2.6.2.1 | Create Test Plan |  | 2d | 2016-06-15 | 2016-06-16 |  | 0d | LamNS; QuangNN | 32h |
| 95 | 1.2.6.2.2 | Review Test Plan |  | 1d? | 2016-06-17 | 2016-06-17 | 94 | 0d | QuangNN | 8h |
| 96 | 1.2.6.2.3 | Update Test Plan |  | 1d? | 2016-06-20 | 2016-06-20 | 95 | 0d | QuangNN | 8h |
| 97 | 1.2.6.2.4 | Test Plan complete | milestone | 0d | 2016-06-20 | 2016-06-20 | 96 | 0d |  |  |
| 98 | 1.2.6.3 | **Test Case** |  | 3.5d | 2016-06-21 | 2016-06-24 | 93 | 0d |  | 56h |
| 99 | 1.2.6.3.1 | **System Test Case** |  | 3.5d | 2016-06-21 | 2016-06-24 |  | 0d |  | 28h |
| 100 | 1.2.6.3.1.1 | Create System Test Case |  | 3d | 2016-06-21 | 2016-06-23 |  | 0d | TestTeam | 24h |
| 101 | 1.2.6.3.1.2 | Review System Test Case |  | 0.5d | 2016-06-24 | 2016-06-24 | 100 | 0d | TestTeam | 4h |
| 102 | 1.2.6.3.2 | **Integration Test Case** |  | 3.5d | 2016-06-21 | 2016-06-24 |  | 0d |  | 28h |
| 103 | 1.2.6.3.2.1 | Create Integration Test Case |  | 3d | 2016-06-21 | 2016-06-23 |  | 0d | TestTeam | 24h |
| 104 | 1.2.6.3.2.2 | Review Integration Test Case |  | 0.5d | 2016-06-24 | 2016-06-24 | 103 | 0d | TestTeam | 4h |
| 105 | 1.2.7 | **Progress Report 3** |  | 1d? | 2016-06-24 | 2016-06-27 | 91 | 0d |  | 8h |
| 106 | 1.2.7.1 | Create Progress Report 3 |  | 1d? | 2016-06-24 | 2016-06-27 |  | 0d | HungTQ | 8h |
| 107 | 1.2.7.2 | Submit Progress Report 3 | milestone | 0d | 2016-06-27 | 2016-06-27 | 106 | 0d | HungTQ |  |

| ID | WBS | Task | Type | Duration | Start | Finish | Predecessors | Total slack | Free slack | Resources | Work |
| --- | --- | --- | --- | --- | --- | --- | --- | --- | --- | --- | --- |
| 108 | 1.3 | **Construction** |  | 36.5d? | 2016-06-27 | 2016-08-16 | 43 | 0d |  |  | 472h |
| 109 | 1.3.1 | **Define Coding Standards** |  | 0.5d | 2016-06-27 | 2016-06-27 |  | 0d |  |  | 8h |
| 110 | 1.3.1.1 | Create Coding Convention |  | 0.5d | 2016-06-27 | 2016-06-27 |  | 0d |  | DevTeam | 4h |
| 111 | 1.3.1.2 | Create Code & UT Test Review Checklist |  | 0.5d | 2016-06-27 | 2016-06-27 |  | 0d |  | DevTeam | 4h |
| 112 | 1.3.2 | **Coding & Unit Test** |  | 18.5d? | 2016-06-27 | 2016-07-21 |  | 0d |  |  | 272h |
| 113 | 1.3.2.1 | Structure core modules & source code common |  | 2d | 2016-06-28 | 2016-06-29 | 109 | 0d |  | DevTeam | 16h |
| 114 | 1.3.2.2 | **Client User Module** |  | 10d? | 2016-06-30 | 2016-07-13 | 113, 109 | 0d |  |  | 160h |
| 115 | 1.3.2.2.1 | Home Page Module |  | 3d | 2016-06-30 | 2016-07-04 |  | 0d |  | DangT | 24h |
| 116 | 1.3.2.2.2 | Login/Logout Module |  | 2d | 2016-07-05 | 2016-07-06 | 115 | 0d |  | DangT | 16h |
| 117 | 1.3.2.2.3 | Browsing Review Module |  | 5d | 2016-06-30 | 2016-07-06 |  | 1d | 0d | HungNV | 40h |
| 118 | 1.3.2.2.4 | Search Module |  | 2d | 2016-07-07 | 2016-07-08 | 117 | 1d | 0d | HungNV | 16h |
| 119 | 1.3.2.2.5 | Bookmark Module |  | 2d | 2016-07-07 | 2016-07-08 | 116 | 0d |  | DangT | 16h |
| 120 | 1.3.2.2.6 | Comment Module |  | 2d | 2016-07-11 | 2016-07-12 | 118 | 1d |  | HungNV | 16h |
| 121 | 1.3.2.2.7 | Report Module |  | 1d? | 2016-07-11 | 2016-07-11 | 119 | 2d |  | HungNV | 8h |
| 122 | 1.3.2.2.8 | User Profile Module |  | 2d | 2016-07-11 | 2016-07-12 | 119 | 0d |  | DangT | 16h |
| 123 | 1.3.2.2.9 | Notification Module |  | 1d | 2016-07-13 | 2016-07-13 | 122 | 0d |  | DangT | 8h |
| 124 | 1.3.2.3 | **Moderator User Module** |  | 6d? | 2016-07-14 | 2016-07-21 | 114 | 0d |  |  | 96h |
| 125 | 1.3.2.3.1 | Login/Logout Module |  | 2d | 2016-07-14 | 2016-07-15 |  | 0d |  | DangT | 16h |
| 126 | 1.3.2.3.2 | User Management Module |  | 3d | 2016-07-14 | 2016-07-18 |  | 0d |  | HungNV | 24h |
| 127 | 1.3.2.3.3 | Company Management Module |  | 3d | 2016-07-19 | 2016-07-21 | 126 | 0d |  | HungNV | 24h |
| 128 | 1.3.2.3.4 | Review Management Module |  | 3d | 2016-07-18 | 2016-07-20 | 125 | 0d |  | DangT | 24h |
| 129 | 1.3.2.3.5 | Featured Content Management Module |  | 1d? | 2016-07-21 | 2016-07-21 | 128 | 0d |  | DangT | 8h |
| 130 | 1.3.2.4 | Complete Coding | milestone | 0d | 2016-06-27 | 2016-06-27 |  | 18.5d |  |  |  |
| 131 | 1.3.3 | **Progress Report 4** |  | 1d? | 2016-07-22 | 2016-07-22 | 112 | 0d |  |  | 8h |
| 132 | 1.3.3.1 | Create Progress Report 4 |  | 1d? | 2016-07-22 | 2016-07-22 |  | 0d |  | HungTQ | 8h |
| 133 | 1.3.3.2 | Submit Progress Report 4 | milestone | 0d | 2016-07-22 | 2016-07-22 | 132 | 0d |  | HungTQ |  |

| ID | WBS | Task | Type | Duration | Start | Finish | Predecessors | Total slack | Resources | Work |
| --- | --- | --- | --- | --- | --- | --- | --- | --- | --- | --- |
| 134 | 1.3.4 | **Testing** |  | 13d | 2016-07-22 | 2016-08-10 | 131 | 0d |  | 152h |
| 135 | 1.3.4.1 | **Updating Test Case (phase 1)** |  | 2d | 2016-07-25 | 2016-07-26 |  | 0d |  | 32h |
| 136 | 1.3.4.1.1 | Update System Test Case |  | 2d | 2016-07-25 | 2016-07-26 |  | 0d | LamNS | 16h |
| 137 | 1.3.4.1.2 | Update Integration Test Case |  | 2d | 2016-07-25 | 2016-07-26 |  | 0d | QuangNN | 16h |
| 138 | 1.3.4.2 | **Executing Test (phase 1)** |  | 4.5d | 2016-07-27 | 2016-08-02 | 135 | 0d |  | 48h |
| 139 | 1.3.4.2.1 | Execute Integration Test |  | 1.5d | 2016-07-27 | 2016-07-28 |  | 0d | TestTeam | 12h |
| 140 | 1.3.4.2.2 | Fix bug Integration Test |  | 1.5d | 2016-07-28 | 2016-07-29 | 139 | 1.5d | TestTeam | 12h |
| 141 | 1.3.4.2.3 | Execute System Test |  | 1.5d | 2016-07-28 | 2016-07-29 | 139 | 0d | TestTeam | 12h |
| 142 | 1.3.4.2.4 | Fix bug System Test |  | 1.5d | 2016-08-01 | 2016-08-02 | 141 | 0d | TestTeam | 12h |
| 143 | 1.3.4.3 | **Updating Test Case (phase 2)** |  | 1d | 2016-08-02 | 2016-08-03 | 138 | 0d |  | 16h |
| 144 | 1.3.4.3.1 | Update Integration Test Case |  | 1d | 2016-08-02 | 2016-08-03 |  | 0d | LamNS | 8h |
| 145 | 1.3.4.3.2 | Update System Test Case |  | 1d | 2016-08-02 | 2016-08-03 |  | 0d | QuangNN | 8h |
| 146 | 1.3.4.4 | **Executing Test (phase 2)** |  | 4.5d | 2016-08-03 | 2016-08-09 | 143 | 0d |  | 48h |
| 147 | 1.3.4.4.1 | Execute Integration Test |  | 1.5d | 2016-08-03 | 2016-08-04 |  | 0d | TestTeam | 12h |
| 148 | 1.3.4.4.2 | Fix bug Integration Test |  | 1.5d | 2016-08-05 | 2016-08-08 | 147 | 1.5d | TestTeam | 12h |
| 149 | 1.3.4.4.3 | Execute System Test |  | 1.5d | 2016-08-05 | 2016-08-08 | 147 | 0d | TestTeam | 12h |
| 150 | 1.3.4.4.4 | Fix bug System Test |  | 1.5d | 2016-08-08 | 2016-08-09 | 149 | 0d | TestTeam | 12h |
| 151 | 1.3.4.5 | Create Test Report |  | 1d | 2016-08-10 | 2016-08-10 | 146 | 0d | QuangNN | 8h |
| 152 | 1.3.4.6 | Testing Complete | milestone | 0d | 2016-07-22 | 2016-07-22 |  | 13d |  |  |
| 153 | 1.3.5 | **Quality Control** |  | 3d | 2016-08-11 | 2016-08-15 | 112, 134 | 0d |  | 24h |
| 154 | 1.3.5.1 | Create Quality Report |  | 2d | 2016-08-11 | 2016-08-12 |  | 0d | LamNS | 16h |
| 155 | 1.3.5.2 | Review Quality Report |  | 0.5d | 2016-08-15 | 2016-08-15 | 154 | 0d | LamNS | 4h |
| 156 | 1.3.5.3 | Update Quality Report |  | 0.5d | 2016-08-15 | 2016-08-15 | 155 | 0d | LamNS | 4h |
| 157 | 1.3.6 | **Progress Report 5** |  | 1d? | 2016-08-16 | 2016-08-16 | 153 | 0d |  | 8h |
| 158 | 1.3.6.1 | Create Progress Report 5 |  | 1d? | 2016-08-16 | 2016-08-16 |  | 0d | HungTQ | 8h |
| 159 | 1.3.6.2 | Submit Progress Report 5 | milestone | 0d | 2016-08-16 | 2016-08-16 | 158 | 0d | HungTQ |  |

| ID | WBS | Task | Type | Duration | Start | Finish | Predecessors | Total slack | Resources | Work |
| --- | --- | --- | --- | --- | --- | --- | --- | --- | --- | --- |
| 160 | 1.4 | **Termination** |  | 8d? | 2016-08-17 | 2016-08-26 | 108 | 0d |  | 128h |
| 161 | 1.4.1 | Create learned lesson |  | 1d? | 2016-08-17 | 2016-08-17 |  | 0d | Team | 8h |
| 162 | 1.4.2 | **Final Report** |  | 2d | 2016-08-18 | 2016-08-19 | 161 | 0d |  | 80h |
| 163 | 1.4.2.1 | Create Final Report document |  | 2d | 2016-08-18 | 2016-08-19 |  | 0d | HungTQ | 16h |
| 164 | 1.4.2.2 | Create Installing Guide |  | 2d | 2016-08-18 | 2016-08-19 |  | 0d | DangT | 16h |
| 165 | 1.4.2.3 | Create User Guideline |  | 2d | 2016-08-18 | 2016-08-19 |  | 0d | LamNS | 16h |
| 166 | 1.4.2.4 | Create Project Result Assessment |  | 2d | 2016-08-18 | 2016-08-19 |  | 0d | HungNV | 16h |
| 167 | 1.4.2.5 | Create Slideshow for Final Presentation |  | 2d | 2016-08-18 | 2016-08-19 |  | 0d | HungTQ | 16h |
| 168 | 1.4.3 | Submit all Final Documents and Source Code | milestone | 0d | 2016-08-19 | 2016-08-19 | 162 | 5d |  |  |
| 169 | 1.4.4 | **Pre-closing** |  | 2d | 2016-08-22 | 2016-08-23 | 162 | 0d |  | 16h |
| 170 | 1.4.4.1 | Training presentation |  | 2d | 2016-08-22 | 2016-08-23 |  | 0d | Team | 16h |
| 171 | 1.4.5 | **Closing** |  | 3d | 2016-08-24 | 2016-08-26 | 169 | 0d |  | 24h |
| 172 | 1.4.5.1 | Presentation for Capstone Project |  | 3d | 2016-08-24 | 2016-08-26 |  | 0d | Team | 24h |
| 173 | 1.4.5.2 | Complete Project | milestone | 0d | 2016-08-26 | 2016-08-26 | 172 | 0d |  |  |
